# Cronograma sem tempo

Schedule from MS Project, 2023-03-29 to 2023-04-18, costs in R$, A marks actual dates.

## Calendars

- Padrão: Mon-Fri 09:00-12:00, 13:00-18:00; Sat-Sun off.

## Resources

| Resource | Rate |
| --- | --- |
| Cliente |  |
| GP Externo | 300 |
| Serpa | 100 |
| Mateus | 200 |
| Maia | 100 |
| Kaze | 100 |

## Schedule

| ID | WBS | Task | Duration | Start | Finish | Predecessors | Complete | Remaining | Baseline start | Baseline finish | Baseline duration | Total slack | Free slack | Constraint | Resources | Work | Actual work | Cost | Baseline cost | Actual cost |
| --- | --- | --- | --- | --- | --- | --- | --- | --- | --- | --- | --- | --- | --- | --- | --- | --- | --- | --- | --- | --- |
| 1 | 1 | **Projeto Clínica** | 14.62d? | 2023-03-29 09:00 A | 2023-04-18 15:00 |  | 45% | 8.08d? | 2023-03-29 09:00 | 2023-04-18 15:00 | 14.62d? | 0d |  |  |  | 217h | 98.48h | 31,400 | 31,400 | 15,429.67 |
| 2 | 1.1 | **Prospecção** | 4.25d? | 2023-03-29 09:00 A | 2023-04-04 11:00 |  | 47% | 2.25d? | 2023-03-29 09:00 | 2023-04-04 11:00 | 4.25d? | 10.38d |  |  |  | 11h | 5.18h | 2,100 | 2,100 | 1,020 |
| 3 | 1.1.1 | **PTEC** | 0.88d? | 2023-03-29 09:00 A | 2023-03-29 17:00 |  | 74% | 0.23d? | 2023-03-29 09:00 | 2023-03-29 17:00 | 0.88d? | 13.75d |  |  |  | 7h | 5.18h | 1,200 | 1,200 | 1,020 |
| 4 | 1.1.1.1 | Estudar domínio de aplicação | 0.12d? | 2023-03-29 09:00 A | 2023-03-29 10:00 A |  | 100% |  | 2023-03-29 09:00 | 2023-03-29 10:00 | 0.12d? |  |  | start no earlier than 2023-03-29 09:00 | Mateus | 1h | 1h | 200 | 200 | 200 |
| 5 | 1.1.1.2 | Reunir-se com o fornecedor de requisitos | 0.12d? | 2023-03-29 10:00 A | 2023-03-29 11:00 | 4 | 50% | 0.06d? | 2023-03-29 10:00 | 2023-03-29 11:00 | 0.12d? | 14.38d |  |  | Mateus | 1h | 0.5h | 200 | 200 | 100 |
| 6 | 1.1.1.3 | Redigir PTEC | 0.38d? | 2023-03-29 11:00 A | 2023-03-29 15:00 A | 5 | 100% |  | 2023-03-29 11:00 | 2023-03-29 15:00 | 0.38d? |  |  |  | Mateus | 3h | 3h | 600 | 600 | 600 |
| 7 | 1.1.1.4 | Revisar proposta técnica | 0.12d? | 2023-03-29 15:00 A | 2023-03-29 16:00 | 6 | 60% | 0.05d? | 2023-03-29 15:00 | 2023-03-29 16:00 | 0.12d? | 0.01d | 0d |  | Mateus | 1h | 0.6h | 200 | 200 | 120 |
| 8 | 1.1.1.5 | Aprovar PTEC | 0.12d? | 2023-03-29 16:00 A | 2023-03-29 17:00 | 7 | 8% | 0.12d? | 2023-03-29 16:00 | 2023-03-29 17:00 | 0.12d? | 13.75d |  |  | Cliente | 1h | 0.08h |  |  |  |
| 9 | 1.1.2 | **Est. Prel. Tam.** | 0.25d | 2023-04-03 16:00 A | 2023-04-03 18:00 |  |  | 0.25d | 2023-04-03 16:00 | 2023-04-03 18:00 | 0.25d | 3.5d | 0d |  |  | 2h |  | 500 | 500 |  |
| 10 | 1.1.2.1 | Estimar tamanho do projeto | 0.12d | 2023-04-03 16:00 A | 2023-04-03 17:00 | 7 |  | 0.12d | 2023-04-03 16:00 | 2023-04-03 17:00 | 0.12d | 3.5d | 0d |  | Mateus | 1h |  | 200 | 200 |  |
| 11 | 1.1.2.2 | Revisar estimativa de tamanho do projeto | 0.12d | 2023-04-03 17:00 | 2023-04-03 18:00 | 10 |  |  | 2023-04-03 17:00 | 2023-04-03 18:00 | 0.12d | 3.5d |  |  | GP Externo | 1h |  | 300 | 300 |  |
| 12 | 1.1.3 | **Est. Prel. Cronograma e Orçamento** | 0.25d | 2023-04-04 09:00 | 2023-04-04 11:00 |  |  |  | 2023-04-04 09:00 | 2023-04-04 11:00 | 0.25d | 3.5d |  |  |  | 2h |  | 400 | 400 |  |
| 13 | 1.1.3.1 | Elaborar cronograma e orçamento preliminares | 0.12d | 2023-04-04 09:00 | 2023-04-04 10:00 | 9 |  |  | 2023-04-04 09:00 | 2023-04-04 10:00 | 0.12d | 3.5d | 0d |  | Mateus | 1h |  | 200 | 200 |  |
| 14 | 1.1.3.2 | Revisar cronograma e orçamento preliminares | 0.12d | 2023-04-04 10:00 | 2023-04-04 11:00 | 13 |  |  | 2023-04-04 10:00 | 2023-04-04 11:00 | 0.12d | 3.5d | 0d |  | Mateus | 1h |  | 200 | 200 |  |
| 15 | 1.2 | **Análises** | 4.75d? | 2023-04-04 11:00 | 2023-04-10 18:00 |  |  |  | 2023-04-04 11:00 | 2023-04-10 18:00 | 4.75d? | 3.5d |  |  |  | 38h |  | 4,700 | 4,700 |  |
| 16 | 1.2.1 | **Documentos de Requisitos** | 2.75d? | 2023-04-04 11:00 | 2023-04-06 18:00 |  |  |  | 2023-04-04 11:00 | 2023-04-06 18:00 | 2.75d? | 3.5d |  |  |  | 22h |  | 2,500 | 2,500 |  |
| 17 | 1.2.1.1 | Reunir-se com o cliente | 0.38d? | 2023-04-04 11:00 | 2023-04-04 15:00 | 14 |  |  | 2023-04-04 11:00 | 2023-04-04 15:00 | 0.38d? | 3.5d | 0d |  | Cliente | 3h |  |  |  |  |
| 18 | 1.2.1.2 | Elaborar DRE | 1.38d? | 2023-04-04 15:00 | 2023-04-05 18:00 | 17 |  |  | 2023-04-04 15:00 | 2023-04-05 18:00 | 1.38d? | 3.5d | 0d |  | Maia | 11h |  | 1,100 | 1,100 |  |
| 19 | 1.2.1.3 | Revisar DRE | 0.75d? | 2023-04-06 09:00 | 2023-04-06 16:00 | 18 |  |  | 2023-04-06 09:00 | 2023-04-06 16:00 | 0.75d? | 3.5d | 0d |  | Mateus | 6h |  | 1,200 | 1,200 |  |
| 20 | 1.2.1.4 | Submeter DTE para aprovação do cliente | 0.25d? | 2023-04-06 16:00 | 2023-04-06 18:00 | 19 |  |  | 2023-04-06 16:00 | 2023-04-06 18:00 | 0.25d? | 3.5d | 0d |  | Maia | 2h |  | 200 | 200 |  |
| 21 | 1.2.2 | **MRB** | 2d? | 2023-04-07 09:00 | 2023-04-10 18:00 |  |  |  | 2023-04-07 09:00 | 2023-04-10 18:00 | 2d? | 3.5d |  |  |  | 16h |  | 2,200 | 2,200 |  |
| 22 | 1.2.2.1 | Elaborar MRB | 1.25d? | 2023-04-07 09:00 | 2023-04-10 11:00 | 20 |  |  | 2023-04-07 09:00 | 2023-04-10 11:00 | 1.25d? | 3.5d | 0d |  | Maia | 10h |  | 1,000 | 1,000 |  |
| 23 | 1.2.2.2 | Revisar MRB | 0.75d? | 2023-04-10 11:00 | 2023-04-10 18:00 | 22 |  |  | 2023-04-10 11:00 | 2023-04-10 18:00 | 0.75d? | 3.5d | 0d |  | Mateus | 6h |  | 1,200 | 1,200 |  |
| 24 | 1.3 | **Projeto** | 1.25d? | 2023-04-11 09:00 | 2023-04-12 11:00 |  |  |  | 2023-04-11 09:00 | 2023-04-12 11:00 | 1.25d? | 3.5d |  |  |  | 10h |  | 1,000 | 1,000 |  |
| 25 | 1.3.1 | **Diagrama de classes** | 1d? | 2023-04-11 09:00 | 2023-04-11 18:00 |  |  |  | 2023-04-11 09:00 | 2023-04-11 18:00 | 1d? | 3.5d |  |  |  | 8h |  | 800 | 800 |  |
| 26 | 1.3.1.1 | Elaborar Diagrama de classes | 0.5d? | 2023-04-11 09:00 | 2023-04-11 14:00 | 23 |  |  | 2023-04-11 09:00 | 2023-04-11 14:00 | 0.5d? | 3.5d | 0d |  | Serpa | 4h |  | 400 | 400 |  |
| 27 | 1.3.1.2 | Revisar Diagrama de classes | 0.38d? | 2023-04-11 14:00 | 2023-04-11 17:00 | 26 |  |  | 2023-04-11 14:00 | 2023-04-11 17:00 | 0.38d? | 3.5d | 0d |  | Kaze | 3h |  | 300 | 300 |  |
| 28 | 1.3.1.3 | Atualizar MRB | 0.12d? | 2023-04-11 17:00 | 2023-04-11 18:00 | 27 |  |  | 2023-04-11 17:00 | 2023-04-11 18:00 | 0.12d? | 3.5d | 0d |  | Serpa | 1h |  | 100 | 100 |  |

| ID | WBS | Task | Duration | Start | Finish | Predecessors | Complete | Remaining | Baseline start | Baseline finish | Baseline duration | Total slack | Free slack | Resources | Work | Actual work | Cost | Baseline cost | Actual cost |
| --- | --- | --- | --- | --- | --- | --- | --- | --- | --- | --- | --- | --- | --- | --- | --- | --- | --- | --- | --- |
| 29 | 1.3.2 | **Modelos Entidades Relacionamento** | 0.25d? | 2023-04-12 09:00 | 2023-04-12 11:00 |  |  |  | 2023-04-12 09:00 | 2023-04-12 11:00 | 0.25d? | 3.5d |  |  | 2h |  | 200 | 200 |  |
| 30 | 1.3.2.1 | Elaborar MER | 0.12d? | 2023-04-12 09:00 | 2023-04-12 10:00 | 28 |  |  | 2023-04-12 09:00 | 2023-04-12 10:00 | 0.12d? | 3.5d | 0d | Serpa | 1h |  | 100 | 100 |  |
| 31 | 1.3.2.2 | Revisar MER | 0.12d? | 2023-04-12 10:00 | 2023-04-12 11:00 | 30 |  |  | 2023-04-12 10:00 | 2023-04-12 11:00 | 0.12d? | 3.5d | 0d | Kaze | 1h |  | 100 | 100 |  |
| 32 | 1.4 | **Implementação** | 0.88d? | 2023-04-12 11:00 A | 2023-04-13 10:00 |  | 64% | 0.31d? | 2023-04-12 11:00 | 2023-04-13 10:00 | 0.88d? | 3.5d |  | Serpa | 130h | 83.5h | 20,000 | 20,000 | 12,949.67 |
| 33 | 1.4.1 | **Release 01** | 0.88d | 2023-04-12 11:00 A | 2023-04-13 10:00 A |  | 100% |  | 2023-04-12 11:00 | 2023-04-13 10:00 | 0.88d |  |  |  | 39h | 39h | 6,100 | 6,100 | 6,100 |
| 34 | 1.4.1.1 | **Implementação** | 0.88d | 2023-04-12 11:00 A | 2023-04-13 10:00 A |  | 100% |  | 2023-04-12 11:00 | 2023-04-13 10:00 | 0.88d |  |  |  | 39h | 39h | 6,100 | 6,100 | 6,100 |
| 35 | 1.4.1.1.1 | **RC01** | 0.88d | 2023-04-12 11:00 A | 2023-04-13 10:00 A |  | 100% |  | 2023-04-12 11:00 | 2023-04-13 10:00 | 0.88d |  |  |  | 20h | 20h | 3,100 | 3,100 | 3,100 |
| 36 | 1.4.1.1.1.1 | Implementar RFS01 | 0.88d | 2023-04-12 11:00 A | 2023-04-13 10:00 A | 31 | 100% |  | 2023-04-12 11:00 | 2023-04-13 10:00 | 0.88d |  |  | Mateus | 7h | 7h | 1,400 | 1,400 | 1,400 |
| 37 | 1.4.1.1.1.2 | Implementar RFSO2 | 0.5d | 2023-04-12 11:00 A | 2023-04-12 16:00 A | 31 | 100% |  | 2023-04-12 11:00 | 2023-04-12 16:00 | 0.5d |  |  | Mateus | 4h | 4h | 800 | 800 | 800 |
| 38 | 1.4.1.1.1.3 | Implementar RFS03 | 0.5d | 2023-04-12 11:00 A | 2023-04-12 16:00 A | 31 | 100% |  | 2023-04-12 11:00 | 2023-04-12 16:00 | 0.5d |  |  | Kaze | 4h | 4h | 400 | 400 | 400 |
| 39 | 1.4.1.1.1.4 | Implementar RFSO4 | 0.62d | 2023-04-12 11:00 A | 2023-04-12 17:00 A | 31 | 100% |  | 2023-04-12 11:00 | 2023-04-12 17:00 | 0.62d |  |  | Kaze | 5h | 5h | 500 | 500 | 500 |
| 40 | 1.4.1.1.2 | **RC02** | 0.88d | 2023-04-12 11:00 A | 2023-04-13 10:00 A |  | 100% |  | 2023-04-12 11:00 | 2023-04-13 10:00 | 0.88d |  |  |  | 19h | 19h | 3,000 | 3,000 | 3,000 |
| 41 | 1.4.1.1.2.1 | Implementar RFS05 | 0.88d | 2023-04-12 11:00 A | 2023-04-13 10:00 A | 31 | 100% |  | 2023-04-12 11:00 | 2023-04-13 10:00 | 0.88d |  |  | Mateus | 7h | 7h | 1,400 | 1,400 | 1,400 |
| 42 | 1.4.1.1.2.2 | Implementar RFSO6 | 0.5d | 2023-04-12 11:00 A | 2023-04-12 16:00 A | 31 | 100% |  | 2023-04-12 11:00 | 2023-04-12 16:00 | 0.5d |  |  | Mateus | 4h | 4h | 800 | 800 | 800 |
| 43 | 1.4.1.1.2.3 | Implementar RFSO7 | 0.5d | 2023-04-12 11:00 A | 2023-04-12 16:00 A | 31 | 100% |  | 2023-04-12 11:00 | 2023-04-12 16:00 | 0.5d |  |  | Kaze | 4h | 4h | 400 | 400 | 400 |
| 44 | 1.4.1.1.2.4 | Implementar RFSO8 | 0.5d | 2023-04-12 11:00 A | 2023-04-12 16:00 A | 31 | 100% |  | 2023-04-12 11:00 | 2023-04-12 16:00 | 0.5d |  |  | Kaze | 4h | 4h | 400 | 400 | 400 |
| 45 | 1.4.2 | **Release 02** | 0.88d? | 2023-04-12 11:00 A | 2023-04-13 10:00 A |  | 100% |  | 2023-04-12 11:00 | 2023-04-13 10:00 | 0.88d? |  |  |  | 40h | 40h | 6,400 | 6,400 | 6,400 |
| 46 | 1.4.2.1 | **Implementação** | 0.88d? | 2023-04-12 11:00 A | 2023-04-13 10:00 A |  | 100% |  | 2023-04-12 11:00 | 2023-04-13 10:00 | 0.88d? |  |  |  | 40h | 40h | 6,400 | 6,400 | 6,400 |
| 47 | 1.4.2.1.1 | **RC03** | 0.88d? | 2023-04-12 11:00 A | 2023-04-13 10:00 A |  | 100% |  | 2023-04-12 11:00 | 2023-04-13 10:00 | 0.88d? |  |  |  | 23h | 23h | 3,500 | 3,500 | 3,500 |
| 48 | 1.4.2.1.1.1 | Implementar RFSO9 | 0.88d? | 2023-04-12 11:00 A | 2023-04-13 10:00 A | 31 | 100% |  | 2023-04-12 11:00 | 2023-04-13 10:00 | 0.88d? |  |  | Mateus | 7h | 7h | 1,400 | 1,400 | 1,400 |
| 49 | 1.4.2.1.1.2 | Implementar RFSO10 | 0.62d? | 2023-04-12 11:00 A | 2023-04-12 17:00 A | 31 | 100% |  | 2023-04-12 11:00 | 2023-04-12 17:00 | 0.62d? |  |  | Mateus | 5h | 5h | 1,000 | 1,000 | 1,000 |
| 50 | 1.4.2.1.1.3 | Implementar RFS011 | 0.62d? | 2023-04-12 11:00 A | 2023-04-12 17:00 A | 31 | 100% |  | 2023-04-12 11:00 | 2023-04-12 17:00 | 0.62d? |  |  | Kaze | 5h | 5h | 500 | 500 | 500 |
| 51 | 1.4.2.1.1.4 | Implementar RFSO12 | 0.75d? | 2023-04-12 11:00 A | 2023-04-12 18:00 A | 31 | 100% |  | 2023-04-12 11:00 | 2023-04-12 18:00 | 0.75d? |  |  | Kaze | 6h | 6h | 600 | 600 | 600 |
| 52 | 1.4.2.1.2 | **RC04** | 0.88d? | 2023-04-12 11:00 A | 2023-04-13 10:00 A |  | 100% |  | 2023-04-12 11:00 | 2023-04-13 10:00 | 0.88d? |  |  |  | 17h | 17h | 2,900 | 2,900 | 2,900 |
| 53 | 1.4.2.1.2.1 | Implementar RFS013 | 0.88d? | 2023-04-12 11:00 A | 2023-04-13 10:00 A | 31 | 100% |  | 2023-04-12 11:00 | 2023-04-13 10:00 | 0.88d? |  |  | Mateus | 7h | 7h | 1,400 | 1,400 | 1,400 |
| 54 | 1.4.2.1.2.2 | Implementar RFSO14 | 0.62d? | 2023-04-12 11:00 A | 2023-04-12 17:00 A | 31 | 100% |  | 2023-04-12 11:00 | 2023-04-12 17:00 | 0.62d? |  |  | Mateus | 5h | 5h | 1,000 | 1,000 | 1,000 |
| 55 | 1.4.2.1.2.3 | Implementar RFS015 | 0.62d? | 2023-04-12 11:00 A | 2023-04-12 17:00 A | 31 | 100% |  | 2023-04-12 11:00 | 2023-04-12 17:00 | 0.62d? |  |  | Kaze | 5h | 5h | 500 | 500 | 500 |

| ID | WBS | Task | Duration | Start | Finish | Predecessors | Complete | Remaining | Baseline start | Baseline finish | Baseline duration | Total slack | Free slack | Resources | Work | Actual work | Cost | Baseline cost | Actual cost |
| --- | --- | --- | --- | --- | --- | --- | --- | --- | --- | --- | --- | --- | --- | --- | --- | --- | --- | --- | --- |
| 56 | 1.4.3 | **Release 03** | 0.88d | 2023-04-12 11:00 | 2023-04-13 10:00 |  |  |  | 2023-04-12 11:00 | 2023-04-13 10:00 | 0.88d | 3.5d |  |  | 44h |  | 6,800 | 6,800 |  |
| 57 | 1.4.3.1 | **Implementação** | 0.88d | 2023-04-12 11:00 | 2023-04-13 10:00 |  |  |  | 2023-04-12 11:00 | 2023-04-13 10:00 | 0.88d | 3.5d |  |  | 44h |  | 6,800 | 6,800 |  |
| 58 | 1.4.3.1.1 | **RC05** | 0.88d | 2023-04-12 11:00 | 2023-04-13 10:00 |  |  |  | 2023-04-12 11:00 | 2023-04-13 10:00 | 0.88d | 3.5d |  |  | 22h |  | 3,400 | 3,400 |  |
| 59 | 1.4.3.1.1.1 | Implementar RFSO16 | 0.88d | 2023-04-12 11:00 | 2023-04-13 10:00 | 31 |  |  | 2023-04-12 11:00 | 2023-04-13 10:00 | 0.88d | 3.5d |  | Mateus | 7h |  | 1,400 | 1,400 |  |
| 60 | 1.4.3.1.1.2 | Implementar RFSO17 | 0.62d | 2023-04-12 11:00 | 2023-04-12 17:00 | 31 |  |  | 2023-04-12 11:00 | 2023-04-12 17:00 | 0.62d | 3.75d |  | Mateus | 5h |  | 1,000 | 1,000 |  |
| 61 | 1.4.3.1.1.3 | Implementar RFSO18 | 0.62d | 2023-04-12 11:00 | 2023-04-12 17:00 | 31 |  |  | 2023-04-12 11:00 | 2023-04-12 17:00 | 0.62d | 3.75d |  | Kaze | 5h |  | 500 | 500 |  |
| 62 | 1.4.3.1.1.4 | Implementar RFSO19 | 0.62d | 2023-04-12 11:00 | 2023-04-12 17:00 | 31 |  |  | 2023-04-12 11:00 | 2023-04-12 17:00 | 0.62d | 3.75d |  | Kaze | 5h |  | 500 | 500 |  |
| 63 | 1.4.3.1.2 | **RC06** | 0.88d | 2023-04-12 11:00 | 2023-04-13 10:00 |  |  |  | 2023-04-12 11:00 | 2023-04-13 10:00 | 0.88d | 3.5d |  |  | 22h |  | 3,400 | 3,400 |  |
| 64 | 1.4.3.1.2.1 | Implementar RFS020 | 0.88d | 2023-04-12 11:00 | 2023-04-13 10:00 | 31 |  |  | 2023-04-12 11:00 | 2023-04-13 10:00 | 0.88d | 3.5d |  | Mateus | 7h |  | 1,400 | 1,400 |  |
| 65 | 1.4.3.1.2.2 | Implementar RFSO21 | 0.62d | 2023-04-12 11:00 | 2023-04-12 17:00 | 31 |  |  | 2023-04-12 11:00 | 2023-04-12 17:00 | 0.62d | 3.75d |  | Mateus | 5h |  | 1,000 | 1,000 |  |
| 66 | 1.4.3.1.2.3 | Implementar RFS022 | 0.62d | 2023-04-12 11:00 | 2023-04-12 17:00 | 31 |  |  | 2023-04-12 11:00 | 2023-04-12 17:00 | 0.62d | 3.75d |  | Kaze | 5h |  | 500 | 500 |  |
| 67 | 1.4.3.1.2.4 | Implementar RFSO23 | 0.62d | 2023-04-12 11:00 | 2023-04-12 17:00 | 31 |  |  | 2023-04-12 11:00 | 2023-04-12 17:00 | 0.62d | 3.75d |  | Kaze | 5h |  | 500 | 500 |  |
| 68 | 1.5 | **Monitoramento e Controle** | 0.62d? | 2023-04-13 10:00 A | 2023-04-13 16:00 |  | 40% | 0.38d? | 2023-04-13 10:00 | 2023-04-13 16:00 | 0.62d? | 0.6d |  |  | 5h | 2h | 500 | 500 | 200 |
| 69 | 1.5.1 | Acompanhar projeto | 0.62d? | 2023-04-13 10:00 A | 2023-04-13 16:00 | 33 | 40% | 0.38d? | 2023-04-13 10:00 | 2023-04-13 16:00 | 0.62d? | 0.6d | 0d | Kaze | 5h | 2h | 500 | 500 | 200 |
| 70 | 1.6 | **Gerência de configuração** | 2.88d? | 2023-04-13 16:00 A | 2023-04-18 15:00 |  | 34% | 1.9d? | 2023-04-13 16:00 | 2023-04-18 15:00 | 2.88d? | 0d |  |  | 23h | 7.8h | 3,100 | 3,100 | 1,260 |
| 71 | 1.6.1 | Elaborar Branch | 1d? | 2023-04-13 16:00 A | 2023-04-14 16:00 | 69 | 60% | 0.4d? | 2023-04-13 16:00 | 2023-04-14 16:00 | 1d? | 0.38d | 0d | Mateus | 8h | 4.8h | 1,600 | 1,600 | 960 |
| 72 | 1.6.2 | Realizar merge da Branch X para a Trunk | 1.88d? | 2023-04-14 16:00 A | 2023-04-18 15:00 | 71 | 20% | 1.5d? | 2023-04-14 16:00 | 2023-04-18 15:00 | 1.88d? | 0d |  | Kaze | 15h | 3h | 1,500 | 1,500 | 300 |
